# Cronograma

Schedule from MS Project, 2022-09-20 to 2022-12-13, costs in €, A marks actual dates.

## Calendars

- Calendario-Sevilla: Mon-Fri 09:00-13:00, 16:00-19:00; Sat-Sun off. Exceptions (off unless hours are given): 2022-10-09 09:00-13:00, 15:00-19:00, 2022-10-29 09:00-13:00, 15:00-19:00, 2022-11-01 (Festividad De Todas Los Santos), 2022-11-12 to 2022-11-13 09:00-13:00, 15:00-19:00, 2022-12-06 (Dia de la Constitucion), 2022-12-08 (Festividad de la Inmaculada Concepcion).

## Resources

| Resource | Group | Rate |
| --- | --- | --- |
| P Mario Pérez Coronel | P | 40 |
| P Álvaro Úbeda Ruiz | P | 40 |
| P Carlos Garrido Rodriguez | P | 40 |
| P Mario Rodriguez Garcia | P | 40 |
| P Ramon Rodriguez Bejarano | P | 40 |
| T Mario Pérez Coronel | T | 25 |
| T Álvaro Úbeda Ruiz | T | 25 |
| T Carlos Garrido Rodriguez | T | 25 |
| T Mario Rodriguez Garcia | T | 25 |
| T Ramon Rodriguez Bejarano | T | 25 |

## Schedule

| ID | WBS | Task | Type | Duration | Start | Finish | Predecessors | Complete | Baseline start | Baseline finish | Baseline duration | Constraint | Resources | Work | Actual work | Cost | Baseline cost | Actual cost |
| --- | --- | --- | --- | --- | --- | --- | --- | --- | --- | --- | --- | --- | --- | --- | --- | --- | --- | --- |
| 1 | 1 | Acta de constitucion | manual | 5.28d? | 2022-09-20 A | 2022-09-28 A |  | 100% | 2022-09-20 | 2022-09-27 | 5.25d? |  | P Álvaro Úbeda Ruiz; P Carlos Garrido Rodriguez | 1.5h | 1.5h | 60 | 40 | 60 |
| 2 | 2 | Registros de interesados | manual | 5.28d? | 2022-09-20 A | 2022-09-28 A |  | 100% | 2022-09-20 | 2022-09-27 | 5.25d? |  | P Mario Pérez Coronel; P Mario Rodriguez Garcia | 1.5h | 1.5h | 60 | 40 | 60 |
| 3 | 3 | Registro de supuestos | manual | 5.31d? | 2022-09-20 A | 2022-09-28 A |  | 100% | 2022-09-20 | 2022-09-27 | 5.25d? |  | P Álvaro Úbeda Ruiz | 1.5h | 1.5h | 60 | 40 | 60 |
| 4 | 4 | **Planificación** |  | 20.25d? | 2022-09-29 A | 2022-10-28 A | 1, 3, 2 | 100% | 2022-09-29 | 2022-10-28 | 20.25d? |  |  | 42.63h | 42.63h | 1,705.33 | 1,705.33 | 1,705.33 |
| 5 | 4.1 | **Plan de proyecto** |  | 3.5d? | 2022-09-29 A | 2022-10-04 A |  | 100% | 2022-09-29 | 2022-10-04 | 3.5d? |  |  | 3h | 3h | 120 | 120 | 120 |
| 6 | 4.1.1 | **Plan de Gestion de Cambios** |  | 3.5d? | 2022-09-29 A | 2022-10-04 A |  | 100% | 2022-09-29 | 2022-10-04 | 3.5d? |  |  | 2h | 2h | 80 | 80 | 80 |
| 7 | 4.1.1.1 | Explicar el control de Cambios | manual | 3.5d | 2022-09-29 A | 2022-10-04 A |  | 100% | 2022-09-29 | 2022-10-04 | 3.5d |  | P Mario Pérez Coronel | 0.5h | 0.5h | 20 | 20 | 20 |
| 8 | 4.1.1.2 | Describir el grado de autoridad de cada integrante | manual | 3.5d | 2022-09-29 A | 2022-10-04 A |  | 100% | 2022-09-29 | 2022-10-04 | 3.5d |  | P Mario Pérez Coronel | 0.5h | 0.5h | 20 | 20 | 20 |
| 9 | 4.1.1.3 | Explicar los tipos de cambios | manual | 3.5d | 2022-09-29 A | 2022-10-04 A |  | 100% | 2022-09-29 | 2022-10-04 | 3.5d |  | P Mario Pérez Coronel | 0.5h | 0.5h | 20 | 20 | 20 |
| 10 | 4.1.1.4 | Explicar la peticion de Cambio | manual | 3.5d | 2022-09-29 A | 2022-10-04 A |  | 100% | 2022-09-29 | 2022-10-04 | 3.5d |  | P Mario Pérez Coronel | 0.5h | 0.5h | 20 | 20 | 20 |
| 11 | 4.1.2 | Plan de Gestión de la Configuración | manual | 3.5d? | 2022-09-29 A | 2022-10-04 A |  | 100% | 2022-09-29 | 2022-10-04 | 3.5d? |  | P Ramon Rodriguez Bejarano | 1h | 1h | 40 | 40 | 40 |
| 12 | 4.2 | Plan de Gestion de Comunicación | manual | 4.5d? | 2022-10-05 A | 2022-10-10 A | 5 | 100% | 2022-10-05 | 2022-10-10 | 4.5d? | finish no earlier than 2022-10-10 | P Carlos Garrido Rodriguez [3.5%]; P Mario Pérez Coronel [3.5%] | 2.5h | 2.5h | 100 | 100 | 100 |
| 13 | 4.3 | **Plan de Gestion de Direccion de Proyecto** |  | 4.38d? | 2022-09-29 A | 2022-10-05 A |  | 100% | 2022-09-29 | 2022-10-05 | 4.38d? |  |  | 2.22h | 2.22h | 88.67 | 88.67 | 88.67 |
| 14 | 4.3.1 | Planificar la gestion de direccion de proyecto |  | 4.38d? | 2022-09-29 A | 2022-10-05 A |  | 100% | 2022-09-29 | 2022-10-05 | 4.38d? | start no earlier than 2022-09-29 | P Mario Rodriguez Garcia [2.5%]; P Ramon Rodriguez Bejarano [2.5%] | 1.72h | 1.72h | 68.67 | 68.67 | 68.67 |
| 15 | 4.3.2 | Revision del plan de gestion de direccion de proyecto |  | 4.38d? | 2022-09-29 A | 2022-10-05 A |  | 100% | 2022-09-29 | 2022-10-05 | 4.38d? | start no earlier than 2022-09-29 | P Mario Rodriguez Garcia [0.7%]; P Ramon Rodriguez Bejarano [0.7%] | 0.5h | 0.5h | 20 | 20 | 20 |
| 16 | 4.4 | **Plan de Gestion de Riesgos** |  | 6.12d? | 2022-09-30 A | 2022-10-09 A |  | 100% | 2022-09-30 | 2022-10-09 | 6.12d? |  |  | 3.65h | 3.65h | 146 | 146 | 146 |
| 17 | 4.4.1 | Identificar riesgos | manual | 6.12d? | 2022-09-30 A | 2022-10-09 A |  | 100% | 2022-09-30 | 2022-10-09 | 6.12d? |  | P Álvaro Úbeda Ruiz | 1.37h | 1.37h | 54.67 | 54.67 | 54.67 |
| 18 | 4.4.2 | Realizar analisis cualitativo y cuantitativo de los riesgos | manual | 6.12d | 2022-09-30 A | 2022-10-09 A |  | 100% | 2022-09-30 | 2022-10-09 | 6.12d |  | P Álvaro Úbeda Ruiz | 0.58h | 0.58h | 23.33 | 23.33 | 23.33 |
| 19 | 4.4.3 | Planificar respuestas a los Riesgos | manual | 6.12d? | 2022-09-30 A | 2022-10-09 A |  | 100% | 2022-09-30 | 2022-10-09 | 6.12d? |  | P Álvaro Úbeda Ruiz | 0.7h | 0.7h | 28 | 28 | 28 |
| 20 | 4.4.4 | Revisar documentos del plan de gestion de riesgos | manual | 6.12d? | 2022-09-30 A | 2022-10-09 A |  | 100% | 2022-09-30 | 2022-10-09 | 6.12d? |  | P Álvaro Úbeda Ruiz | 1h | 1h | 40 | 40 | 40 |
| 21 | 4.5 | **Plan de Gestion de Calidad** |  | 6.25d? | 2022-10-04 A | 2022-10-11 A |  | 100% | 2022-10-04 | 2022-10-11 | 6.25d? |  |  | 1.5h | 1.5h | 60 | 60 | 60 |
| 22 | 4.5.1 | Planificar la gestion de la calidad | manual | 6.25d? | 2022-10-04 A | 2022-10-11 A |  | 100% | 2022-10-04 | 2022-10-11 | 6.25d? |  | P Mario Rodriguez Garcia | 1h | 1h | 40 | 40 | 40 |
| 23 | 4.5.2 | Revisar el plan de gestion de la calidad | manual | 6.25d? | 2022-10-04 A | 2022-10-11 A |  | 100% | 2022-10-04 | 2022-10-11 | 6.25d? |  | P Mario Rodriguez Garcia | 0.5h | 0.5h | 20 | 20 | 20 |
| 24 | 4.6 | **Plan de Gestion de Recursos** |  | 1.75d? | 2022-10-12 A | 2022-10-13 A | 21, 29 | 100% | 2022-10-12 | 2022-10-13 | 1.75d? |  |  | 2h | 2h | 80 | 80 | 80 |
| 25 | 4.6.1 | Planificar la gestion de recursos |  | 1.75d? | 2022-10-12 A | 2022-10-13 A |  | 100% | 2022-10-12 | 2022-10-13 | 1.75d? | finish no earlier than 2022-10-13 | P Mario Pérez Coronel [7.1%] | 1h | 1h | 40 | 40 | 40 |
| 26 | 4.6.2 | Estimar los recursos de las actividades |  | 1.75d? | 2022-10-12 A | 2022-10-13 A |  | 100% | 2022-10-12 | 2022-10-13 | 1.75d? | finish no earlier than 2022-10-13 | P Mario Pérez Coronel [7.1%] | 1h | 1h | 40 | 40 | 40 |

| ID | WBS | Task | Type | Duration | Start | Finish | Predecessors | Complete | Baseline start | Baseline finish | Baseline duration | Constraint | Resources | Work | Actual work | Cost | Baseline cost | Actual cost |
| --- | --- | --- | --- | --- | --- | --- | --- | --- | --- | --- | --- | --- | --- | --- | --- | --- | --- | --- |
| 27 | 4.7 | **Plan de Gestion de alcance** |  | 7.12d? | 2022-10-07 A | 2022-10-17 A |  | 100% | 2022-10-07 | 2022-10-28 | 15d? |  |  | 9.5h | 9.5h | 380 | 380 | 380 |
| 28 | 4.7.1 | Planificar la gestion del alcance |  | 0.12d? | 2022-10-17 A | 2022-10-17 A | 21 | 100% | 2022-10-17 | 2022-10-17 | 0.12d? | finish no earlier than 2022-10-17 | P Mario Rodriguez Garcia | 1h | 1h | 40 | 40 | 40 |
| 29 | 4.7.2 | **Linea Base de Alcance** |  | 3.62d? | 2022-10-07 A | 2022-10-11 A |  | 100% | 2022-10-07 | 2022-10-11 | 3.62d? |  |  | 5h | 5h | 200 | 200 | 200 |
| 30 | 4.7.2.1 | Enunciado de alcance |  | 3.62d? | 2022-10-07 A | 2022-10-11 A |  | 100% | 2022-10-07 | 2022-10-11 | 3.62d? | start no earlier than 2022-10-07 | P Álvaro Úbeda Ruiz [3.4%] | 1h | 1h | 40 | 40 | 40 |
| 31 | 4.7.2.2 | EDT |  | 3.62d? | 2022-10-07 A | 2022-10-11 A |  | 100% | 2022-10-07 | 2022-10-11 | 3.62d? | finish no earlier than 2022-10-11 | P Mario Rodriguez Garcia [6.9%] | 2h | 2h | 80 | 80 | 80 |
| 32 | 4.7.2.3 | Diccionario de EDT |  | 3.62d? | 2022-10-07 A | 2022-10-11 A |  | 100% | 2022-10-07 | 2022-10-11 | 3.62d? | start no earlier than 2022-10-07 | P Mario Rodriguez Garcia [6.9%] | 2h | 2h | 80 | 80 | 80 |
| 33 | 4.7.3 | **Requisitos** |  | 3.62d? | 2022-10-07 A | 2022-10-11 A |  | 100% | 2022-10-07 | 2022-10-11 | 3.62d? |  |  | 3.5h | 3.5h | 140 | 140 | 140 |
| 34 | 4.7.3.1 | Planificar la gestion de requisitos | manual | 3.62d? | 2022-10-07 A | 2022-10-11 A |  | 100% | 2022-10-07 | 2022-10-11 | 3.62d? |  | P Álvaro Úbeda Ruiz | 0.5h | 0.5h | 20 | 20 | 20 |
| 35 | 4.7.3.2 | Listar requisitos | manual | 3.62d? | 2022-10-07 A | 2022-10-11 A |  | 100% | 2022-10-07 | 2022-10-11 | 3.62d? |  | P Álvaro Úbeda Ruiz | 1.5h | 1.5h | 60 | 60 | 60 |
| 36 | 4.7.3.3 | Matriz de trazabilidad | manual | 3.62d? | 2022-10-07 A | 2022-10-11 A |  | 100% | 2022-10-07 | 2022-10-11 | 3.62d? |  | P Álvaro Úbeda Ruiz | 1.5h | 1.5h | 60 | 60 | 60 |
| 37 | 4.8 | **Plan de Gestion de Costes** |  | 4.38d? | 2022-10-18 A | 2022-10-24 A | 42, 16 | 100% | 2022-10-18 | 2022-10-24 | 4.38d? |  |  | 4h | 4h | 160 | 160 | 160 |
| 38 | 4.8.1 | Planificar la gestion de costes | manual | 4.38d? | 2022-10-18 A | 2022-10-24 A |  | 100% | 2022-10-18 | 2022-10-24 | 4.38d? |  | P Ramon Rodriguez Bejarano | 1h | 1h | 40 | 40 | 40 |
| 39 | 4.8.2 | Estimar Costes | manual | 4.38d? | 2022-10-18 A | 2022-10-24 A |  | 100% | 2022-10-18 | 2022-10-24 | 4.38d? |  | P Ramon Rodriguez Bejarano | 1h | 1h | 40 | 40 | 40 |
| 40 | 4.8.3 | Determinar el presupuesto | manual | 4.38d? | 2022-10-18 A | 2022-10-24 A |  | 100% | 2022-10-18 | 2022-10-24 | 4.38d? |  | P Ramon Rodriguez Bejarano | 1h | 1h | 40 | 40 | 40 |
| 41 | 4.8.4 | Revisar el plan de gestion de costes | manual | 4.38d? | 2022-10-18 A | 2022-10-24 A |  | 100% | 2022-10-18 | 2022-10-24 | 4.38d? |  | P Ramon Rodriguez Bejarano | 1h | 1h | 40 | 40 | 40 |
| 42 | 4.9 | **Plan de Gestion de Cronograma** |  | 3.5d | 2022-10-12 A | 2022-10-17 A | 29 | 100% | 2022-10-12 | 2022-10-17 | 3.5d? |  |  | 9.27h | 9.27h | 370.67 | 370.67 | 370.67 |
| 43 | 4.9.1 | Planificar la gestion del cronograma | manual | 1d | 2022-10-12 A | 2022-10-13 A |  | 100% | 2022-10-12 | 2022-10-13 | 1d? |  | P Carlos Garrido Rodriguez | 0.5h | 0.5h | 20 | 20 | 20 |
| 44 | 4.9.2 | Actividades | manual | 1d | 2022-10-12 A | 2022-10-13 A |  | 100% | 2022-10-12 | 2022-10-13 | 1d? |  | P Carlos Garrido Rodriguez | 1.77h | 1.77h | 70.67 | 70.67 | 70.67 |
| 45 | 4.9.3 | Secuencia de Actividades | manual | 1d | 2022-10-12 A | 2022-10-13 A |  | 100% | 2022-10-12 | 2022-10-13 | 1d? |  | P Carlos Garrido Rodriguez | 0.5h | 0.5h | 20 | 20 | 20 |
| 46 | 4.9.4 | Duracion de las Actividades | manual | 3.5d | 2022-10-12 A | 2022-10-17 A |  | 100% | 2022-10-12 | 2022-10-17 | 3.5d? |  | P Carlos Garrido Rodriguez | 0.5h | 0.5h | 20 | 20 | 20 |
| 47 | 4.9.5 | Cronograma | manual | 3.5d | 2022-10-12 A | 2022-10-17 A |  | 100% | 2022-10-12 | 2022-10-17 | 3.5d? |  | P Carlos Garrido Rodriguez | 6h | 6h | 240 | 240 | 240 |
| 48 | 4.10 | **Plan de Gestion de Intregracion** |  | 9.62d? | 2022-10-10 A | 2022-10-24 A |  | 100% | 2022-10-10 | 2022-10-24 | 9.62d? |  |  | 3h | 3h | 120 | 120 | 120 |
| 49 | 4.10.1 | Realizacion del plan de gestion de integracion | manual | 9.62d? | 2022-10-10 A | 2022-10-24 A |  | 100% | 2022-10-10 | 2022-10-24 | 9.62d? |  | P Mario Pérez Coronel | 2h | 2h | 80 | 80 | 80 |
| 50 | 4.10.2 | Revision del plan de gestion de integracion | manual | 9.62d? | 2022-10-10 A | 2022-10-24 A |  | 100% | 2022-10-10 | 2022-10-24 | 9.62d? |  | P Mario Pérez Coronel | 1h | 1h | 40 | 40 | 40 |

| ID | WBS | Task | Type | Duration | Start | Finish | Predecessors | Complete | Remaining | Actual start | Actual finish | Baseline start | Baseline finish | Baseline duration | Constraint | Resources | Work | Actual work | Cost | Baseline cost | Actual cost |
| --- | --- | --- | --- | --- | --- | --- | --- | --- | --- | --- | --- | --- | --- | --- | --- | --- | --- | --- | --- | --- | --- |
| 51 | 4.11 | **Plan de Gestion de Adquisicion** |  | 4.38d? | 2022-10-24 A | 2022-10-28 A |  | 100% |  |  |  | 2022-10-24 | 2022-10-28 | 4.38d? |  |  | 2h | 2h | 80 | 80 | 80 |
| 52 | 4.11.1 | Planificar la gestion de adquisiciones | manual | 4.38d? | 2022-10-24 A | 2022-10-28 A |  | 100% |  |  |  | 2022-10-24 | 2022-10-28 | 4.38d? |  | P Carlos Garrido Rodriguez | 1h | 1h | 40 | 40 | 40 |
| 53 | 4.11.2 | Revision del plan de gestion de adquisiciones | manual | 4.38d? | 2022-10-24 A | 2022-10-28 A |  | 100% |  |  |  | 2022-10-24 | 2022-10-28 | 4.38d? |  | P Carlos Garrido Rodriguez | 1h | 1h | 40 | 40 | 40 |
| 54 | 5 | **Desarrollo** |  | 19.58d? | 2022-10-29 A | 2022-11-25 | 4 | 59% | 8.09d? |  |  | 2022-10-29 | 2022-11-28 | 20.5d? |  |  | 56.35h | 38.85h | 1,573.75 | 2,362.5 | 1,068.75 |
| 55 | 5.1 | **Entregable 1** |  | 11d? | 2022-10-29 A | 2022-11-14 A |  | 100% |  |  |  | 2022-10-29 | 2022-11-14 | 11.75d? |  |  | 15.85h | 15.85h | 403.75 | 862.5 | 403.75 |
| 56 | 5.1.1 | **Ejecucion** |  | 9.14d? | 2022-10-29 A | 2022-11-12 |  | 100% |  |  | 2022-11-09 | 2022-10-29 | 2022-11-12 | 9.14d? |  |  | 10.35h | 10.35h | 258.75 | 687.5 | 258.75 |
| 57 | 5.1.1.1 | Asignacion de adquisiciones | manual | 1d | 2022-10-29 A | 2022-10-29 A |  | 100% |  |  |  | 2022-10-29 | 2022-10-29 | 1d? |  | T Mario Pérez Coronel [6.2%] | 0.5h | 0.5h | 12.5 | 12.5 | 12.5 |
| 58 | 5.1.1.2 | Implementacion de la pagina web | manual | 0.04d | 2022-10-31 A | 2022-10-31 A | 57 | 100% |  |  |  | 2022-10-31 | 2022-11-04 | 3d? |  | T Álvaro Úbeda Ruiz; T Carlos Garrido Rodriguez; T Mario Pérez Coronel; T Mario Rodriguez Garcia; T Ramon Rodriguez Bejarano | 1.5h | 1.5h | 37.5 | 225 | 37.5 |
| 59 | 5.1.1.3 | Implementacion de la gestion de usuarios | manual | 2.31d | 2022-11-04 A | 2022-11-09 A | 58 | 100% |  |  |  | 2022-11-04 | 2022-11-12 | 5.14d? | start no earlier than 2022-11-04 | T Álvaro Úbeda Ruiz [4.4%]; T Carlos Garrido Rodriguez [4.4%]; T Mario Pérez Coronel [4.4%]; T Mario Rodriguez Garcia [4.4%]; T Ramon Rodriguez Bejarano [4.4%] | 4.05h | 4.05h | 101.25 | 225 | 101.25 |
| 60 | 5.1.1.4 | Implementacion de la gestion de libros | manual | 2.46d | 2022-11-04 A | 2022-11-09 A | 58 | 100% |  |  |  | 2022-11-04 | 2022-11-12 | 5.14d? |  | T Álvaro Úbeda Ruiz [4.4%]; T Carlos Garrido Rodriguez [4.4%]; T Mario Pérez Coronel [4.4%]; T Mario Rodriguez Garcia [4.4%]; T Ramon Rodriguez Bejarano [4.4%] | 4.3h | 4.3h | 107.5 | 225 | 107.5 |
| 61 | 5.1.2 | **Seguimiento** |  | 3d? | 2022-11-11 | 2022-11-14 A |  | 100% |  | 2022-11-09 |  | 2022-11-11 | 2022-11-14 | 3d? |  |  | 5.5h | 5.5h | 145 | 175 | 145 |
| 62 | 5.1.2.1 | Validacion del alcance |  | 0.01d? | 2022-11-09 A | 2022-11-09 A | 58, 60, 59 | 100% |  |  |  | 2022-11-12 | 2022-11-13 | 1d? | start no earlier than 2022-10-01 | P Ramon Rodriguez Bejarano; P Álvaro Úbeda Ruiz; P Carlos Garrido Rodriguez; P Mario Rodriguez Garcia; P Mario Pérez Coronel | 0.5h | 0.5h | 20 | 12.5 | 20 |
| 63 | 5.1.2.2 | Seguimiento de los involucrados | milestone | 0d? | 2022-11-11 A | 2022-11-11 A | 58, 59, 60 | 100% |  |  |  | 2022-11-12 | 2022-11-13 | 1d? |  | P Álvaro Úbeda Ruiz; P Carlos Garrido Rodriguez; P Mario Pérez Coronel; P Mario Rodriguez Garcia; P Ramon Rodriguez Bejarano |  |  |  | 12.5 |  |
| 64 | 5.1.2.3 | Control del cronograma | milestone | 0d? | 2022-11-11 A | 2022-11-11 A | 58, 59, 60 | 100% |  |  |  | 2022-11-12 | 2022-11-13 | 1d? |  | P Álvaro Úbeda Ruiz; P Carlos Garrido Rodriguez; P Mario Pérez Coronel; P Mario Rodriguez Garcia; P Ramon Rodriguez Bejarano |  |  |  | 12.5 |  |
| 65 | 5.1.2.4 | Control de costes | milestone | 0d? | 2022-11-11 A | 2022-11-11 A | 58, 59, 60 | 100% |  |  |  | 2022-11-12 | 2022-11-13 | 1d? |  | P Álvaro Úbeda Ruiz; P Carlos Garrido Rodriguez; P Mario Pérez Coronel; P Mario Rodriguez Garcia; P Ramon Rodriguez Bejarano |  |  |  | 12.5 |  |
| 66 | 5.1.2.5 | Control de adquisiciones | milestone | 0d? | 2022-11-11 A | 2022-11-11 A | 58, 59, 60 | 100% |  |  |  | 2022-11-12 | 2022-11-13 | 1d? |  | P Álvaro Úbeda Ruiz; P Carlos Garrido Rodriguez; P Mario Pérez Coronel; P Mario Rodriguez Garcia; P Ramon Rodriguez Bejarano |  |  |  | 12.5 |  |
| 67 | 5.1.2.6 | Control de los trabajadores | milestone | 0d? | 2022-11-11 A | 2022-11-11 A | 58, 59, 60 | 100% |  |  |  | 2022-11-12 | 2022-11-13 | 1d? |  | P Álvaro Úbeda Ruiz; P Carlos Garrido Rodriguez; P Mario Pérez Coronel; P Mario Rodriguez Garcia; P Ramon Rodriguez Bejarano |  |  |  | 12.5 |  |
| 68 | 5.1.2.7 | Control de calidad | milestone, manual | 0d | 2022-11-11 A | 2022-11-12 A | 58, 59, 60 | 100% |  |  |  | 2022-11-11 | 2022-11-12 | 1d? |  | P Álvaro Úbeda Ruiz [3%]; P Carlos Garrido Rodriguez [3%]; P Mario Pérez Coronel [3%]; P Mario Rodriguez Garcia [3%]; P Ramon Rodriguez Bejarano [3%] |  |  |  | 25 |  |
| 69 | 5.1.2.8 | Reunion semanal con el patrocinador | milestone, manual | 0d | 2022-11-12 A | 2022-11-13 A | 64, 65, 66, 67, 68 | 100% |  |  |  | 2022-11-12 | 2022-11-13 | 1d? |  | P Álvaro Úbeda Ruiz [3%]; P Carlos Garrido Rodriguez [3%]; P Mario Pérez Coronel [3%]; P Mario Rodriguez Garcia [3%]; P Ramon Rodriguez Bejarano [3%] |  |  |  | 25 |  |
| 70 | 5.1.2.9 | Reunion de retrospectiva | manual | 1d? | 2022-11-13 A | 2022-11-14 A | 69 | 100% |  |  |  | 2022-11-13 | 2022-11-14 | 1d? |  | T Álvaro Úbeda Ruiz [3%]; T Carlos Garrido Rodriguez [3%]; T Mario Pérez Coronel [3%]; T Mario Rodriguez Garcia [3%]; T Ramon Rodriguez Bejarano [3%] | 3h | 3h | 75 | 25 | 75 |
| 71 | 5.1.2.10 | Reunion revision del Entregable 1 | manual | 1d? | 2022-11-13 A | 2022-11-14 A | 69 | 100% |  |  |  | 2022-11-13 | 2022-11-14 | 1d? |  | T Álvaro Úbeda Ruiz [3%]; T Carlos Garrido Rodriguez [3%]; T Mario Pérez Coronel [3%]; T Mario Rodriguez Garcia [3%]; T Ramon Rodriguez Bejarano [3%] | 2h | 2h | 50 | 25 | 50 |
| 72 | 5.2 | **Entregable 2** |  | 3.67d? | 2022-11-15 A | 2022-11-21 | 55 | 100% |  |  | 2022-11-18 | 2022-11-15 | 2022-11-18 | 2.91d? |  |  | 23h | 23h | 665 | 600 | 665 |
| 73 | 5.2.1 | **Ejecucion** |  | 1d? | 2022-11-15 A | 2022-11-16 |  | 100% |  |  | 2022-11-15 | 2022-11-15 | 2022-11-15 | 0.17d? |  |  | 14.5h | 14.5h | 362.5 | 350 | 362.5 |
| 74 | 5.2.1.1 | Implementacion de la gestion de compras | manual | 0.17d | 2022-11-15 A | 2022-11-15 A |  | 100% |  |  |  | 2022-11-15 | 2022-11-15 | 0.17d |  | T Álvaro Úbeda Ruiz; T Carlos Garrido Rodriguez; T Mario Pérez Coronel | 6h | 6h | 150 | 200 | 150 |
| 75 | 5.2.1.2 | Implementacion de la gestion de libros | manual | 0.29d | 2022-11-15 A | 2022-11-15 A |  | 100% |  |  |  | 2022-11-15 | 2022-11-15 | 0.13d |  | T Mario Rodriguez Garcia; T Ramon Rodriguez Bejarano | 8.5h | 8.5h | 212.5 | 150 | 212.5 |

| ID | WBS | Task | Type | Duration | Start | Finish | Predecessors | Complete | Actual finish | Baseline start | Baseline finish | Baseline duration | Total slack | Free slack | Resources | Work | Actual work | Cost | Baseline cost | Actual cost |
| --- | --- | --- | --- | --- | --- | --- | --- | --- | --- | --- | --- | --- | --- | --- | --- | --- | --- | --- | --- | --- |
| 76 | 5.2.2 | **Seguimiento** |  | 2.67d? | 2022-11-16 A | 2022-11-21 |  | 100% | 2022-11-18 | 2022-11-16 | 2022-11-18 | 1.91d? |  |  |  | 8.5h | 8.5h | 302.5 | 250 | 302.5 |
| 77 | 5.2.2.1 | Validacion de alcance | manual | 1d? | 2022-11-16 A | 2022-11-17 A | 75, 74 | 100% |  | 2022-11-16 | 2022-11-17 | 1d? |  |  | P Álvaro Úbeda Ruiz [1.2%]; P Carlos Garrido Rodriguez [1.2%]; P Mario Pérez Coronel [1.2%]; P Mario Rodriguez Garcia [1.2%]; P Ramon Rodriguez Bejarano [1.2%] | 0.5h | 0.5h | 20 | 20 | 20 |
| 78 | 5.2.2.2 | Seguimiento de los involucrados | manual | 1d? | 2022-11-16 A | 2022-11-17 A | 75, 74 | 100% |  | 2022-11-16 | 2022-11-17 | 1d? |  |  | P Álvaro Úbeda Ruiz [1.2%]; P Carlos Garrido Rodriguez [1.2%]; P Mario Pérez Coronel [1.2%]; P Mario Rodriguez Garcia [1.2%]; P Ramon Rodriguez Bejarano [1.2%] | 0.5h | 0.5h | 20 | 20 | 20 |
| 79 | 5.2.2.3 | Control del cronograma | manual | 1d? | 2022-11-16 A | 2022-11-17 A | 75, 74 | 100% |  | 2022-11-16 | 2022-11-17 | 1d? |  |  | P Álvaro Úbeda Ruiz [1.2%]; P Carlos Garrido Rodriguez [1.2%]; P Mario Pérez Coronel [1.2%]; P Mario Rodriguez Garcia [1.2%]; P Ramon Rodriguez Bejarano [1.2%] | 1.5h | 1.5h | 60 | 20 | 60 |
| 80 | 5.2.2.4 | Control de costes | manual | 1d? | 2022-11-16 A | 2022-11-17 A | 75, 74 | 100% |  | 2022-11-16 | 2022-11-17 | 1d? |  |  | P Álvaro Úbeda Ruiz [1.2%]; P Carlos Garrido Rodriguez [1.2%]; P Mario Pérez Coronel [1.2%]; P Mario Rodriguez Garcia [1.2%]; P Ramon Rodriguez Bejarano [1.2%] | 0.5h | 0.5h | 20 | 20 | 20 |
| 81 | 5.2.2.5 | Control de adquisiciones | manual | 1d? | 2022-11-16 A | 2022-11-17 A | 75, 74 | 100% |  | 2022-11-16 | 2022-11-17 | 1d? |  |  | P Álvaro Úbeda Ruiz [1.2%]; P Carlos Garrido Rodriguez [1.2%]; P Mario Pérez Coronel [1.2%]; P Mario Rodriguez Garcia [1.2%]; P Ramon Rodriguez Bejarano [1.2%] | 0.5h | 0.5h | 20 | 20 | 20 |
| 82 | 5.2.2.6 | Control de los trabajadores | manual | 1d? | 2022-11-16 A | 2022-11-17 A | 75, 74 | 100% |  | 2022-11-16 | 2022-11-17 | 1d? |  |  | P Álvaro Úbeda Ruiz [1.2%]; P Carlos Garrido Rodriguez [1.2%]; P Mario Pérez Coronel [1.2%]; P Mario Rodriguez Garcia [1.2%]; P Ramon Rodriguez Bejarano [1.2%] | 0.5h | 0.5h | 20 | 20 | 20 |
| 83 | 5.2.2.7 | Control de calidad | manual | 1d? | 2022-11-16 A | 2022-11-17 A | 75, 74 | 100% |  | 2022-11-16 | 2022-11-17 | 1d? |  |  | P Álvaro Úbeda Ruiz [2.5%]; P Carlos Garrido Rodriguez [2.5%]; P Mario Pérez Coronel [2.5%]; P Mario Rodriguez Garcia [2.5%]; P Ramon Rodriguez Bejarano [2.5%] | 1h | 1h | 40 | 40 | 40 |
| 84 | 5.2.2.8 | Reunion semanal con el patrocinador | manual | 0.83d? | 2022-11-17 A | 2022-11-18 A | 83 | 100% |  | 2022-11-17 | 2022-11-18 | 0.83d? |  |  | P Álvaro Úbeda Ruiz [3%]; P Carlos Garrido Rodriguez [3%]; P Mario Pérez Coronel [3%]; P Mario Rodriguez Garcia [3%]; P Ramon Rodriguez Bejarano [3%] | 1h | 1h | 40 | 40 | 40 |
| 85 | 5.2.2.9 | Reunion de retrospectiva | manual | 0.05d | 2022-11-18 A | 2022-11-18 A | 84 | 100% |  | 2022-11-18 | 2022-11-18 | 0.06d |  |  | T Mario Rodriguez Garcia; T Ramon Rodriguez Bejarano; T Carlos Garrido Rodriguez; T Álvaro Úbeda Ruiz; T Mario Pérez Coronel | 0.5h | 0.5h | 12.5 | 25 | 12.5 |
| 86 | 5.2.2.10 | Reunion revision del Entregable 2 | manual | 0.05d | 2022-11-18 A | 2022-11-18 A | 84 | 100% |  | 2022-11-18 | 2022-11-18 | 0.03d |  |  | T Álvaro Úbeda Ruiz; T Carlos Garrido Rodriguez; T Mario Pérez Coronel; T Mario Rodriguez Garcia; T Ramon Rodriguez Bejarano | 2h | 2h | 50 | 25 | 50 |
| 87 | 5.3 | **Entregable 3** |  | 4.17d? | 2022-11-21 | 2022-11-25 | 72 |  |  | 2022-11-22 | 2022-11-28 | 4.38d? |  |  |  | 17.5h |  | 505 | 900 |  |
| 88 | 5.3.1 | **Ejecucion** |  | 1.71d? | 2022-11-21 | 2022-11-23 |  |  |  | 2022-11-22 | 2022-11-23 | 1.17d? | 0.71d |  |  | 11h |  | 275 | 640 |  |
| 89 | 5.3.1.1 | Gestion de la calidad | manual | 1d | 2022-11-22 | 2022-11-23 |  |  |  | 2022-11-22 | 2022-11-23 | 1d? |  |  | T Álvaro Úbeda Ruiz; T Carlos Garrido Rodriguez; T Mario Pérez Coronel | 2h |  | 50 | 80 |  |
| 90 | 5.3.1.2 | Implementacion de la gestion de compras |  | 0.12d? | 2022-11-21 | 2022-11-21 |  |  |  | 2022-11-22 | 2022-11-23 | 1.17d? | 4.46d |  | T Mario Rodriguez Garcia; T Ramon Rodriguez Bejarano | 2h |  | 50 | 280 |  |
| 91 | 5.3.1.3 | Implementacion de la gestion de la pagina web |  | 0.29d? | 2022-11-21 | 2022-11-21 |  |  |  | 2022-11-22 | 2022-11-23 | 1.17d? | 1.29d | 0.88d | T Álvaro Úbeda Ruiz; T Carlos Garrido Rodriguez; T Mario Pérez Coronel | 7h |  | 175 | 280 |  |
| 92 | 5.3.2 | **Seguimiento** |  | 3d? | 2022-11-22 | 2022-11-25 |  |  |  | 2022-11-23 | 2022-11-28 | 3d? |  |  |  | 6.5h |  | 230 | 260 |  |
| 93 | 5.3.2.1 | Validacion del alcance | manual | 1d? | 2022-11-22 | 2022-11-23 | 91 |  |  | 2022-11-23 | 2022-11-24 | 1d? |  |  | P Álvaro Úbeda Ruiz [2.1%]; P Carlos Garrido Rodriguez [2.1%]; P Mario Pérez Coronel [2.1%] | 0.5h |  | 20 | 20 |  |
| 94 | 5.3.2.2 | Seguimiento de los involucrados | manual | 1d? | 2022-11-22 | 2022-11-23 | 91 |  |  | 2022-11-23 | 2022-11-24 | 1d? |  |  | P Álvaro Úbeda Ruiz [2.1%]; P Carlos Garrido Rodriguez [2.1%]; P Mario Pérez Coronel [2.1%] | 0.5h |  | 20 | 20 |  |
| 95 | 5.3.2.3 | Control del cronograma | manual | 1d? | 2022-11-22 | 2022-11-23 | 91 |  |  | 2022-11-23 | 2022-11-24 | 1d? |  |  | P Álvaro Úbeda Ruiz [2.1%]; P Carlos Garrido Rodriguez [2.1%]; P Mario Pérez Coronel [2.1%] | 0.5h |  | 20 | 20 |  |
| 96 | 5.3.2.4 | Control de costes | manual | 1d? | 2022-11-22 | 2022-11-23 | 91 |  |  | 2022-11-23 | 2022-11-24 | 1d? |  |  | P Álvaro Úbeda Ruiz [1.2%]; P Carlos Garrido Rodriguez [1.2%]; P Mario Pérez Coronel [1.2%]; P Mario Rodriguez Garcia [1.2%]; P Ramon Rodriguez Bejarano [1.2%] | 0.5h |  | 20 | 20 |  |
| 97 | 5.3.2.5 | Control de adquisiciones | manual | 1d? | 2022-11-22 | 2022-11-23 | 91 |  |  | 2022-11-23 | 2022-11-24 | 1d? |  |  | P Álvaro Úbeda Ruiz [2.1%]; P Carlos Garrido Rodriguez [2.1%]; P Mario Pérez Coronel [2.1%] | 0.5h |  | 20 | 20 |  |
| 98 | 5.3.2.6 | Control de los trabajadores | manual | 1d? | 2022-11-22 | 2022-11-23 | 91 |  |  | 2022-11-23 | 2022-11-24 | 1d? |  |  | P Álvaro Úbeda Ruiz [2.1%]; P Carlos Garrido Rodriguez [2.1%]; P Mario Pérez Coronel [2.1%] | 0.5h |  | 20 | 20 |  |
| 99 | 5.3.2.7 | Control de calidad | manual | 1d? | 2022-11-22 | 2022-11-23 | 91 |  |  | 2022-11-23 | 2022-11-24 | 1d? |  |  | P Álvaro Úbeda Ruiz [2.1%]; P Carlos Garrido Rodriguez [2.1%]; P Mario Pérez Coronel [2.1%] | 0.5h |  | 20 | 20 |  |
| 100 | 5.3.2.8 | Reunion semanal con el patrocinador | manual | 1d? | 2022-11-23 | 2022-11-24 | 99 |  |  | 2022-11-24 | 2022-11-25 | 1d? |  |  | P Álvaro Úbeda Ruiz [4.2%]; P Carlos Garrido Rodriguez [4.2%]; P Mario Pérez Coronel [4.2%] | 1h |  | 40 | 40 |  |
| 101 | 5.3.2.9 | Reunion de retrospectiva | manual | 1d? | 2022-11-24 | 2022-11-25 | 100 |  |  | 2022-11-25 | 2022-11-28 | 1d? |  |  | T Carlos Garrido Rodriguez; T Álvaro Úbeda Ruiz; T Mario Pérez Coronel; T Mario Rodriguez Garcia; T Ramon Rodriguez Bejarano | 1h |  | 25 | 40 |  |
| 102 | 5.3.2.10 | Reunion revision del Entregable 1 | manual | 1d? | 2022-11-24 | 2022-11-25 | 100 |  |  | 2022-11-25 | 2022-11-28 | 1d? |  |  | T Álvaro Úbeda Ruiz; T Mario Pérez Coronel; T Mario Rodriguez Garcia; T Ramon Rodriguez Bejarano; T Carlos Garrido Rodriguez | 1h |  | 25 | 40 |  |

| ID | WBS | Task | Duration | Start | Finish | Predecessors | Baseline start | Baseline finish | Baseline duration | Total slack | Free slack | Constraint | Resources | Work | Cost | Baseline cost |
| --- | --- | --- | --- | --- | --- | --- | --- | --- | --- | --- | --- | --- | --- | --- | --- | --- |
| 103 | 6 | **Fin del Proyecto** | 7.88d? | 2022-11-29 | 2022-12-13 | 54 | 2022-11-29 | 2022-12-13 | 7.88d? |  |  |  |  | 8h | 200 | 200 |
| 104 | 6.1 | **Lecciones aprendidas** | 4d? | 2022-11-29 | 2022-12-05 |  | 2022-11-29 | 2022-12-05 | 4d? |  |  |  |  | 2h | 50 | 50 |
| 105 | 6.1.1 | Explicar lo aprendido | 4d? | 2022-11-29 | 2022-12-05 |  | 2022-11-29 | 2022-12-05 | 4d? | -0.5d | 0d |  | T Álvaro Úbeda Ruiz [1.2%]; T Carlos Garrido Rodriguez [1.2%]; T Mario Pérez Coronel [1.2%]; T Mario Rodriguez Garcia [1.2%]; T Ramon Rodriguez Bejarano [1.2%] | 2h | 50 | 50 |
| 106 | 6.2 | **Entrega final** | 4.38d? | 2022-12-05 | 2022-12-13 | 105 | 2022-12-05 | 2022-12-13 | 4.38d? |  |  |  |  | 6h | 150 | 150 |
| 107 | 6.2.1 | Revision y entrega del producto final | 4.38d? | 2022-12-05 | 2022-12-13 |  | 2022-12-05 | 2022-12-13 | 4.38d? | 0d |  | start no earlier than 2022-12-05 | T Álvaro Úbeda Ruiz [3.4%]; T Carlos Garrido Rodriguez [3.4%]; T Mario Pérez Coronel [3.4%]; T Mario Rodriguez Garcia [3.4%]; T Ramon Rodriguez Bejarano [3.4%] | 6h | 150 | 150 |
